# WBS for Web Project

Schedule from MS Project, 2022-09-12 to 2022-12-09.

## Calendars

- Standard: Mon-Fri 08:00-12:00, 13:00-17:00; Sat-Sun off.

## Schedule

| ID | WBS | Task | Duration | Start | Finish | Predecessors | Total slack | Free slack |
| --- | --- | --- | --- | --- | --- | --- | --- | --- |
| 1 | 1 | **WBS for Web Design Project** | 65d? | 2022-09-12 | 2022-12-09 |  | 0d |  |
| 2 | 1.1 | **Planning** | 3d? | 2022-09-12 | 2022-09-14 |  | 0d |  |
| 3 | 1.1.1 | Product Definition | 2d | 2022-09-12 | 2022-09-13 |  | 0d |  |
| 4 | 1.1.2 | Stakeholder Approval | 1d? | 2022-09-14 | 2022-09-14 | 3 | 0d |  |
| 5 | 1.2 | **Definition** | 9d | 2022-09-15 | 2022-09-27 | 2 | 0d |  |
| 6 | 1.2.1 | **Requirements Development** | 2d | 2022-09-15 | 2022-09-16 |  | 1d | 0d |
| 7 | 1.2.1.1 | Business Requirements Development | 1d | 2022-09-16 | 2022-09-16 | 8FF | 1d |  |
| 8 | 1.2.1.2 | System Requirements Development | 2d | 2022-09-15 | 2022-09-16 |  | 1d | 0d |
| 9 | 1.2.2 | **Conceptual Design Development** | 3d | 2022-09-19 | 2022-09-21 | 6 | 1d | 0d |
| 10 | 1.2.2.1 | Conceptual Data Design | 2d | 2022-09-19 | 2022-09-20 |  | 2d | 1d |
| 11 | 1.2.2.2 | Conceptual Process Design | 3d | 2022-09-19 | 2022-09-21 | 10FF | 1d |  |
| 12 | 1.2.3 | **Architectural Design Development** | 2d | 2022-09-22 | 2022-09-23 | 9 | 1d | 0d |
| 13 | 1.2.3.1 | Web Design Methods Evaluation | 2d | 2022-09-22 | 2022-09-23 |  | 1d | 0d |
| 14 | 1.2.3.2 | Web Design Method Selection | 2d | 2022-09-22 | 2022-09-23 | 13SS | 1d |  |
| 15 | 1.2.4 | Bill of Materails (BoM) Creation | 1d | 2022-09-26 | 2022-09-26 | 12 | 1d |  |
| 16 | 1.2.5 | **Resource Procurement** | 9d | 2022-09-15 | 2022-09-27 |  | 0d |  |
| 17 | 1.2.5.1 | Human Resources Procurement | 2d | 2022-09-15 | 2022-09-16 |  | 0d |  |
| 18 | 1.2.5.2 | Hardware Procurement | 3d | 2022-09-19 | 2022-09-21 | 17 | 0d |  |
| 19 | 1.2.5.3 | Software Procurement | 2d | 2022-09-22 | 2022-09-23 | 18 | 0d |  |
| 20 | 1.2.5.4 | Telecommunications Procurement | 2d | 2022-09-26 | 2022-09-27 | 19 | 0d |  |
| 21 | 1.3 | **Construction** | 37d? | 2022-09-28 | 2022-11-17 | 5 | 0d |  |
| 22 | 1.3.1 | **Detailed Design Development** | 30d | 2022-09-28 | 2022-11-08 |  | 0d |  |
| 23 | 1.3.1.1 | Data design | 1w | 2022-09-28 | 2022-10-04 |  | 0d |  |
| 24 | 1.3.1.2 | Business Logic Design | 1w | 2022-10-05 | 2022-10-11 | 23 | 0d |  |
| 25 | 1.3.1.3 | User Interface Design | 2w | 2022-10-12 | 2022-10-25 | 24 | 0d |  |
| 26 | 1.3.1.4 | Internal Design Standards Consultation | 1w | 2022-10-26 | 2022-11-01 | 25 | 0d |  |
| 27 | 1.3.1.5 | Industry Design Standards Consultation | 1w | 2022-11-02 | 2022-11-08 | 26 | 0d |  |
| 28 | 1.3.2 | High-Level Test Plan Development | 2d | 2022-11-07 | 2022-11-08 | 22FF | 7d |  |

| ID | WBS | Task | Duration | Start | Finish | Predecessors | Total slack |
| --- | --- | --- | --- | --- | --- | --- | --- |
| 29 | 1.3.3 | **System Components-Code, Unit Test** | 7d | 2022-11-09 | 2022-11-17 | 22 | 0d |
| 30 | 1.3.3.1 | Database Components | 2d | 2022-11-09 | 2022-11-10 |  | 0d |
| 31 | 1.3.3.2 | Code/Logic Components | 2d | 2022-11-11 | 2022-11-14 | 30 | 0d |
| 32 | 1.3.3.3 | Web GUI Interface Components | 3d | 2022-11-15 | 2022-11-17 | 31 | 0d |
| 33 | 1.3.4 | System Installation | 1d? | 2022-09-28 | 2022-09-28 |  | 36d |
| 34 | 1.4 | **Testing** | 6d? | 2022-11-18 | 2022-11-25 | 21 | 0d |
| 35 | 1.4.1 | **Testing Execution** | 4d? | 2022-11-18 | 2022-11-23 |  | 0d |
| 36 | 1.4.1.1 | System Test | 1d? | 2022-11-18 | 2022-11-18 |  | 0d |
| 37 | 1.4.1.2 | User Acceptance Test | 2d | 2022-11-21 | 2022-11-22 | 36 | 0d |
| 38 | 1.4.1.3 | Performance Test | 1d? | 2022-11-23 | 2022-11-23 | 37 | 0d |
| 39 | 1.4.2 | Analyze Defects/Correct | 1d? | 2022-11-24 | 2022-11-24 | 35 | 0d |
| 40 | 1.4.3 | Production Readliness Verification | 1d? | 2022-11-25 | 2022-11-25 | 39 | 0d |
| 41 | 1.5 | **Deployment** | 9d? | 2022-11-28 | 2022-12-08 | 34 | 0d |
| 42 | 1.5.1 | **Transition** | 8d | 2022-11-28 | 2022-12-07 |  | 0d |
| 43 | 1.5.1.1 | Support Personnel Training | 1w | 2022-11-28 | 2022-12-02 |  | 0d |
| 44 | 1.5.1.2 | Support Procedures Documentation | 2d | 2022-12-05 | 2022-12-06 | 43 | 0d |
| 45 | 1.5.1.3 | Software | 1d | 2022-12-07 | 2022-12-07 | 44 | 0d |
| 46 | 1.5.1.4 | Hardware | 1d | 2022-12-07 | 2022-12-07 | 45FF | 0d |
| 47 | 1.5.2 | Legacy System Decommissioning | 1d? | 2022-12-08 | 2022-12-08 | 42 | 0d |
| 48 | 1.6 | Project Management | 1d? | 2022-12-09 | 2022-12-09 | 41 | 0d |
