# Kế hoạch phát triển phần mềm

Schedule from MS Project, 2023-01-03 to 2023-05-16.

## Calendars

- Standard: Mon-Fri 08:00-12:00, 13:00-17:00; Sat-Sun off.

## Schedule

| ID | WBS | Task | Type | Duration | Start | Finish | Predecessors | Total slack |
| --- | --- | --- | --- | --- | --- | --- | --- | --- |
| 1 | 1 | **Phạm vi** |  | 3.5d | 2023-01-03 | 2023-01-06 |  | 0d |
| 2 | 1.1 | Xác định phạm vi dự án |  | 4h | 2023-01-03 | 2023-01-03 |  | 0d |
| 3 | 1.2 | Bảo đảm tài trợ dự án |  | 1d | 2023-01-03 | 2023-01-04 | 2 | 0d |
| 4 | 1.3 | Xác định tài nguyên sơ bộ |  | 1d | 2023-01-04 | 2023-01-05 | 3 | 0d |
| 5 | 1.4 | Bảo đảmtài nguyên cốt lõi |  | 1d | 2023-01-05 | 2023-01-06 | 4 | 0d |
| 6 | 1.5 | Phạm vi hoàn thành | milestone | 0d | 2023-01-06 | 2023-01-06 | 5 | 0d |
| 7 | 2 | **Phân tích / Yêu cầu phần mềm** |  | 14d | 2023-01-06 | 2023-01-26 |  | 0d |
| 8 | 2.1 | Tiến hành phân tích nhu cầu |  | 5d | 2023-01-06 | 2023-01-13 | 6 | 0d |
| 9 | 2.2 | Đặc tả sơ bộ phần mềm |  | 3d | 2023-01-13 | 2023-01-18 | 8 | 0d |
| 10 | 2.3 | Xây dựng ngân sách sơ bộ |  | 2d | 2023-01-18 | 2023-01-20 | 9 | 0d |
| 11 | 2.4 | Đánh giá đặc tả phần mềm/ngân sách cùng với nhóm |  | 4h | 2023-01-20 | 2023-01-20 | 10 | 0d |
| 12 | 2.5 | Kết hợp phản hồi vào đặc tả phần mềm |  | 1d | 2023-01-23 | 2023-01-23 | 11 | 0d |
| 13 | 2.6 | Phát triển tiến trình bàn giao |  | 1d | 2023-01-24 | 2023-01-24 | 12 | 0d |
| 14 | 2.7 | Nhận được sự chấp thuận để tiếp tục (khái niệm, tiến độ thời gian, ngân sách) |  | 4h | 2023-01-25 | 2023-01-25 | 13 | 0d |
| 15 | 2.8 | Bảo đảm các tài nguyên cần thiết |  | 1d | 2023-01-25 | 2023-01-26 | 14 | 0d |
| 16 | 2.9 | Phân tích hoàn thành | milestone | 0d | 2023-01-26 | 2023-01-26 | 15 | 0d |
| 17 | 3 | **Thiết kế** |  | 14.5d | 2023-01-26 | 2023-02-15 |  | 0d |
| 18 | 3.1 | Xem lại đặc tả sơ bộ phần mềm |  | 2d | 2023-01-26 | 2023-01-30 | 16 | 0d |
| 19 | 3.2 | Phát triển đặc tả chức năng |  | 5d | 2023-01-30 | 2023-02-06 | 18 | 0d |
| 20 | 3.3 | Phát triển nguyên mẫu dựa trên đặc tả chức năng |  | 4d | 2023-02-06 | 2023-02-10 | 19 | 0d |
| 21 | 3.4 | Xem lại đặc tả chức năng |  | 2d | 2023-02-10 | 2023-02-14 | 20 | 0d |
| 22 | 3.5 | Kết hợp phản hồi vào đặc tả chức năng |  | 1d | 2023-02-14 | 2023-02-15 | 21 | 0d |
| 23 | 3.6 | Nhận được sự chấp thuận để tiếp tục |  | 4h | 2023-02-15 | 2023-02-15 | 22 | 0d |
| 24 | 3.7 | Thiết kế hoàn thành | milestone | 0d | 2023-02-15 | 2023-02-15 | 23 | 0d |

| ID | WBS | Task | Type | Duration | Start | Finish | Predecessors | Total slack | Free slack |
| --- | --- | --- | --- | --- | --- | --- | --- | --- | --- |
| 25 | 4 | **Phát triển** |  | 21.75d | 2023-02-16 | 2023-03-17 |  | 0d |  |
| 26 | 4.1 | Xem lại đặc tả chức năng |  | 1d | 2023-02-16 | 2023-02-16 | 24 | 0d |  |
| 27 | 4.2 | Xác định các thông số thiết kế mô-đun/phân cấp |  | 1d | 2023-02-17 | 2023-02-17 | 26 | 0d |  |
| 28 | 4.3 | Chỉ định nhân viên phát triển |  | 1d | 2023-02-20 | 2023-02-20 | 27 | 0d |  |
| 29 | 4.4 | Phát triển mã nguồn |  | 15d | 2023-02-21 | 2023-03-13 | 28 | 0d |  |
| 30 | 4.5 | Kiểm thử của người phát triển (gỡ lỗi chính) |  | 15d | 2023-02-24 | 2023-03-17 | 29FS-11.25d | 0d |  |
| 31 | 4.6 | Phát triển hoàn thành | milestone | 0d | 2023-03-17 | 2023-03-17 | 30 | 0d |  |
| 32 | 5 | **Kiểm thử** |  | 48.75d | 2023-02-16 | 2023-04-25 |  | 15d |  |
| 33 | 5.1 | Xây dựng kế hoạch kiểm thử đơn vị bằng cách sử dụng đặc tả sản phẩm |  | 4d | 2023-02-16 | 2023-02-21 | 24 | 17.75d |  |
| 34 | 5.2 | Phát triển kế hoạch kiểm thử tích hợp bằng cách sử dụng đặc tả của sản phẩm |  | 4d | 2023-02-16 | 2023-02-21 | 24 | 59.75d |  |
| 35 | 5.3 | **Kiểm thử đơn vị** |  | 15d | 2023-03-17 | 2023-04-07 |  | 0d |  |
| 36 | 5.3.1 | Xem lại mã mô-đun |  | 5d | 2023-03-17 | 2023-03-24 | 33, 31 | 0d |  |
| 37 | 5.3.2 | Kiểm thử các mô-đun thành phần đối với đặc tả sản phẩm |  | 2d | 2023-03-24 | 2023-03-28 | 31, 36 | 0d |  |
| 38 | 5.3.3 | Xác định các điểm bất thường đối với đặc tả sản phẩm |  | 3d | 2023-03-28 | 2023-03-31 | 37 | 0d |  |
| 39 | 5.3.4 | Sửa đổi mã nguồn |  | 3d | 2023-03-31 | 2023-04-05 | 38 | 0d |  |
| 40 | 5.3.5 | Kiểm thử lại mã đã sửa đổi |  | 2d | 2023-04-05 | 2023-04-07 | 39 | 0d |  |
| 41 | 5.3.6 | Kiểm thử đơn vị hoàn thành | milestone | 0d | 2023-04-07 | 2023-04-07 | 40 | 0d |  |
| 42 | 5.4 | **Kiểm thử tích hợp** |  | 12d | 2023-04-07 | 2023-04-25 |  | 0d |  |
| 43 | 5.4.1 | Kiểm thử tích hợp mô-đun |  | 5d | 2023-04-07 | 2023-04-14 | 41 | 0d |  |
| 44 | 5.4.2 | Xác định các điểm bất thường đối với đặc tả |  | 2d | 2023-04-14 | 2023-04-18 | 43 | 0d |  |
| 45 | 5.4.3 | Sửa đổi mã nguồn |  | 3d | 2023-04-18 | 2023-04-21 | 44 | 0d |  |
| 46 | 5.4.4 | Kiểm thử lại mã đã sửa đổi |  | 2d | 2023-04-21 | 2023-04-25 | 45 | 0d |  |
| 47 | 5.4.5 | Kiểm thử tích hợp hoàn thành | milestone | 0d | 2023-04-25 | 2023-04-25 | 46 | 0d |  |
| 48 | 6 | **Tập huấn** |  | 45.75d | 2023-02-16 | 2023-04-20 |  | 3d |  |
| 49 | 6.1 | Phát triển đặc tả tập huấn cho người dùng cuối |  | 3d | 2023-02-16 | 2023-02-20 | 24 | 21.75d | 18.75d |
| 50 | 6.2 | Xây dựng đặc tả tập huấn cho nhân viên hỗ trợ của bộ phận trợ giúp |  | 3d | 2023-02-16 | 2023-02-20 | 24 | 21.75d | 18.75d |
| 51 | 6.3 | Xác định phương pháp tập huấn (tập huấn dựa trên máy tính, lớp học, v.v.) |  | 2d | 2023-02-16 | 2023-02-17 | 24 | 22.75d | 19.75d |
| 52 | 6.4 | Xây dựng tài liệu tập huấn |  | 3w | 2023-03-17 | 2023-04-07 | 49, 31, 50, 51 | 3d | 0d |
| 53 | 6.5 | Tập huấn thực hiện nghiên cứu về khả năng sử dụng |  | 4d | 2023-04-07 | 2023-04-13 | 52 | 3d | 0d |
| 54 | 6.6 | Hoàn thiện tài liệu tập huấn |  | 3d | 2023-04-13 | 2023-04-18 | 53 | 3d | 0d |
| 55 | 6.7 | Xây dựng cơ chế phân phối tập huấn |  | 2d | 2023-04-18 | 2023-04-20 | 54 | 3d | 0d |
| 56 | 6.8 | Tài liệu tập huấn hoàn thành | milestone | 0d | 2023-04-20 | 2023-04-20 | 55 | 3d |  |

| ID | WBS | Task | Type | Duration | Start | Finish | Predecessors | Total slack | Free slack |
| --- | --- | --- | --- | --- | --- | --- | --- | --- | --- |
| 57 | 7 | **Tài liệu** |  | 30.5d | 2023-02-16 | 2023-03-30 |  | 18.25d |  |
| 58 | 7.1 | Phát triển đặc tả Trợ giúp |  | 1d | 2023-02-16 | 2023-02-16 | 24 | 27.75d | 9.5d |
| 59 | 7.2 | Phát triển hệ thống Trợ giúp |  | 3w | 2023-03-02 | 2023-03-23 | 58, 29FS-7.5d | 18.25d | 0d |
| 60 | 7.3 | Xem lại tài liệu Trợ giúp |  | 3d | 2023-03-23 | 2023-03-28 | 59 | 18.25d | 0d |
| 61 | 7.4 | Kết hợp phản hồi tài liệu Trợ giúp |  | 2d | 2023-03-28 | 2023-03-30 | 60 | 18.25d | 0d |
| 62 | 7.5 | Phát triển đặc tả hướng dẫn sử dụng |  | 2d | 2023-02-16 | 2023-02-17 | 24 | 27.75d | 8.5d |
| 63 | 7.6 | Phát triển hướng dẫn sử dụng |  | 3w | 2023-03-02 | 2023-03-23 | 62, 29FS-7.5d | 19.25d | 0d |
| 64 | 7.7 | Xem lại tất cả tài liệu người dùng |  | 2d | 2023-03-23 | 2023-03-27 | 63 | 19.25d | 0d |
| 65 | 7.8 | Kết hợp phản hồi tài liệu người dùng |  | 2d | 2023-03-27 | 2023-03-29 | 64 | 19.25d | 1d |
| 66 | 7.9 | Tài liệu hoàn thành | milestone | 0d | 2023-03-30 | 2023-03-30 | 65, 61 | 18.25d |  |
| 67 | 8 | **Thử nghiệm** |  | 70.25d | 2023-01-26 | 2023-05-04 |  | 0d |  |
| 68 | 8.1 | Xác định nhóm kiểm thử |  | 1d | 2023-01-26 | 2023-01-27 | 16 | 61.25d | 0d |
| 69 | 8.2 | Phát triển cơ chế phân phối phần mềm |  | 1d | 2023-01-27 | 2023-01-30 | 68 | 61.25d |  |
| 70 | 8.3 | Cài đặt/triển khai phần mềm |  | 1d | 2023-04-25 | 2023-04-26 | 47, 69, 66, 56 | 0d |  |
| 71 | 8.4 | Nhận phản hồi của người dùng |  | 1w | 2023-04-26 | 2023-05-03 | 70 | 0d |  |
| 72 | 8.5 | Đánh giá thông tin kiểm thử |  | 1d | 2023-05-03 | 2023-05-04 | 71 | 0d |  |
| 73 | 8.6 | Việc thử nghiệm hoàn thành | milestone | 0d | 2023-05-04 | 2023-05-04 | 72 | 0d |  |
| 74 | 9 | **Triển khai** |  | 5d | 2023-05-04 | 2023-05-11 |  | 0d |  |
| 75 | 9.1 | Xác định chiến lược triển khai cuối cùng |  | 1d | 2023-05-04 | 2023-05-05 | 73 | 0d |  |
| 76 | 9.2 | Phát triển phương pháp triển khai |  | 1d | 2023-05-05 | 2023-05-08 | 75 | 0d |  |
| 77 | 9.3 | Bảo đảm tài nguyên triển khai |  | 1d | 2023-05-08 | 2023-05-09 | 76 | 0d |  |
| 78 | 9.4 | Tập huấn nhân viên hỗ trợ\ |  | 1d | 2023-05-09 | 2023-05-10 | 77 | 0d |  |
| 79 | 9.5 | Triển khai phần mềm |  | 1d | 2023-05-10 | 2023-05-11 | 78 | 0d |  |
| 80 | 9.6 | Việc triển khai hoàn thành | milestone | 0d | 2023-05-11 | 2023-05-11 | 79 | 0d |  |

| ID | WBS | Task | Type | Duration | Start | Finish | Predecessors | Total slack |
| --- | --- | --- | --- | --- | --- | --- | --- | --- |
| 81 | 10 | **Đánh giá sau triển khai** |  | 3d | 2023-05-11 | 2023-05-16 |  | 0d |
| 82 | 10.1 | Ghi lại những bài học kinh nghiệm |  | 1d | 2023-05-11 | 2023-05-12 | 80 | 0d |
| 83 | 10.2 | Phân phối cho các thành viên trong nhóm |  | 1d | 2023-05-12 | 2023-05-15 | 82 | 0d |
| 84 | 10.3 | Tạo nhóm bảo trì phần mềm |  | 1d | 2023-05-15 | 2023-05-16 | 83 | 0d |
| 85 | 10.4 | Đánh giá sau triển khai hoàn thành | milestone | 0d | 2023-05-16 | 2023-05-16 | 84 | 0d |
| 86 | 11 | Mẫu phát triển phần mềm hoàn thành | milestone | 0d | 2023-05-16 | 2023-05-16 | 85 | 0d |
