# Kế hoạch phát triển phần mềm

Schedule from MS Project, 2022-01-03 to 2022-05-18, costs in $, A marks actual dates.

## Calendars

- Standard: Mon-Fri 08:00-12:00, 13:00-17:00; Sat-Sun off. Exceptions (off unless hours are given): 2022-04-30 to 2022-05-03 (Nghỉ lễ 30/4 - 1/5).

## Resources

| Resource | Group | Rate |
| --- | --- | --- |
| Ban quản lý |  | 50 |
| Nguyễn Văn An | Người quản lý dự án | 40 |
| Hoàng Minh Hải | Người phân tích | 35 |
| Võ Trường Giang | Người phân tích | 35 |
| Trần Hồng Hạnh | Người phát triển | 30 |
| Lâm Thanh Sang | Người phát triển | 30 |
| Huỳnh Tấn Phát | Người phát triển | 30 |
| Đỗ Tiến Hoàng | Người phát triển | 30 |
| Trương Minh Hảo | Người phát triển | 30 |
| Mai Văn Liêm | Người phát triển | 30 |
| Đoàn Tiến Thuận | Người phát triển | 30 |
| Nguyễn Thanh Bình | Người kiểm thử | 25 |
| Trần Hoàng Hà | Người kiểm thử | 25 |
| Lê Thanh Thảo | Người kiểm thử | 25 |
| Nguyễn Thành Tuấn | Người kiểm thử | 25 |
| Dương Nhật Nam | Người kiểm thử | 30 |
| Phạm Minh Phương | Người tập huấn | 30 |
| Trương Thành Nhân | Người tập huấn | 25 |
| Mai Diễm Trinh | Người tập huấn | 25 |
| Phan Minh Nhật | Hỗ trợ kỹ thuật | 25 |
| Lương Thùy Trang | Hỗ trợ kỹ thuật | 25 |
| Trần Công Minh | Hỗ trợ kỹ thuật | 25 |
| Nguyễn Thanh Hoài | Hỗ trợ kỹ thuật | 25 |
| Nguyễn Chí Hiếu | Hỗ trợ kỹ thuật | 25 |
| Trần Hoàng Khải | Hỗ trợ kỹ thuật | 25 |

## Schedule

| ID | WBS | Task | Type | Duration | Start | Finish | Predecessors | Complete | Remaining | Total slack | Resources | Work | Actual work | Cost | Actual cost |
| --- | --- | --- | --- | --- | --- | --- | --- | --- | --- | --- | --- | --- | --- | --- | --- |
| 1 | 1 | **Phạm vi** |  | 3.5d | 2022-01-03 A | 2022-01-06 A |  | 100% |  |  |  | 28h | 28h | 1,240 | 1,240 |
| 2 | 1.1 | Xác định phạm vi dự án |  | 4h | 2022-01-03 A | 2022-01-03 A |  | 100% |  |  | Ban quản lý | 4h | 4h | 200 | 200 |
| 3 | 1.2 | Bảo đảm tài trợ dự án |  | 1d | 2022-01-03 A | 2022-01-04 A | 2 | 100% |  |  | Ban quản lý | 8h | 8h | 400 | 400 |
| 4 | 1.3 | Xác định tài nguyên sơ bộ |  | 1d | 2022-01-04 A | 2022-01-05 A | 3 | 100% |  |  | Nguyễn Văn An | 8h | 8h | 320 | 320 |
| 5 | 1.4 | Bảo đảmtài nguyên cốt lõi |  | 1d | 2022-01-05 A | 2022-01-06 A | 4 | 100% |  |  | Nguyễn Văn An | 8h | 8h | 320 | 320 |
| 6 | 1.5 | Phạm vi hoàn thành | milestone | 0d | 2022-01-06 A | 2022-01-06 A | 5 | 100% |  |  |  |  |  |  |  |
| 7 | 2 | **Phân tích / Yêu cầu phần mềm** |  | 14d | 2022-01-06 A | 2022-01-26 A |  | 100% |  |  |  | 158h | 158h | 5,790 | 5,790 |
| 8 | 2.1 | Tiến hành phân tích nhu cầu |  | 5d | 2022-01-06 A | 2022-01-13 A | 6 | 100% |  |  | Hoàng Minh Hải [50%]; Võ Trường Giang | 60h | 60h | 2,100 | 2,100 |
| 9 | 2.2 | Đặc tả sơ bộ phần mềm |  | 3d | 2022-01-13 A | 2022-01-18 A | 8 | 100% |  |  | Hoàng Minh Hải [50%]; Võ Trường Giang | 36h | 36h | 1,260 | 1,260 |
| 10 | 2.3 | Xây dựng ngân sách sơ bộ |  | 2d | 2022-01-18 A | 2022-01-20 A | 9 | 100% |  |  | Nguyễn Văn An | 16h | 16h | 640 | 640 |
| 11 | 2.4 | Đánh giá đặc tả phần mềm/ngân sách cùng với nhóm |  | 4h | 2022-01-20 A | 2022-01-20 A | 10 | 100% |  |  | Hoàng Minh Hải [50%]; Nguyễn Văn An; Võ Trường Giang | 10h | 10h | 370 | 370 |
| 12 | 2.5 | Kết hợp phản hồi vào đặc tả phần mềm |  | 1d | 2022-01-21 A | 2022-01-21 A | 11 | 100% |  |  | Hoàng Minh Hải [50%]; Võ Trường Giang | 12h | 12h | 420 | 420 |
| 13 | 2.6 | Phát triển tiến trình bàn giao |  | 1d | 2022-01-24 A | 2022-01-24 A | 12 | 100% |  |  | Nguyễn Văn An | 8h | 8h | 320 | 320 |
| 14 | 2.7 | Nhận được sự chấp thuận để tiếp tục (khái niệm, tiến độ thời gian, ngân sách) |  | 4h | 2022-01-25 A | 2022-01-25 A | 13 | 100% |  |  | Nguyễn Văn An; Ban quản lý | 8h | 8h | 360 | 360 |
| 15 | 2.8 | Bảo đảm các tài nguyên cần thiết |  | 1d | 2022-01-25 A | 2022-01-26 A | 14 | 100% |  |  | Nguyễn Văn An | 8h | 8h | 320 | 320 |
| 16 | 2.9 | Phân tích hoàn thành | milestone | 0d | 2022-01-26 A | 2022-01-26 A | 15 | 100% |  |  |  |  |  |  |  |
| 17 | 3 | **Thiết kế** |  | 14.5d | 2022-01-26 A | 2022-02-15 |  | 8% | 13.31d | 0d |  | 204h | 14.3h | 7,380 | 500.5 |
| 18 | 3.1 | Xem lại đặc tả sơ bộ phần mềm |  | 2d | 2022-01-26 A | 2022-01-28 | 16 | 60% | 0.81d | 0d | Hoàng Minh Hải [50%]; Võ Trường Giang | 24h | 14.3h | 840 | 500.5 |
| 19 | 3.2 | Phát triển đặc tả chức năng |  | 5d | 2022-01-28 | 2022-02-04 | 18 |  |  | 0d | Hoàng Minh Hải [50%]; Võ Trường Giang; Trần Hồng Hạnh [20%] | 68h |  | 2,340 |  |
| 20 | 3.3 | Phát triển nguyên mẫu dựa trên đặc tả chức năng |  | 4d | 2022-02-04 | 2022-02-10 | 19 |  |  | 0d | Hoàng Minh Hải [50%]; Võ Trường Giang; Lâm Thanh Sang | 80h |  | 2,640 |  |
| 21 | 3.4 | Xem lại đặc tả chức năng |  | 2d | 2022-02-10 | 2022-02-14 | 20 |  |  | 0d | Ban quản lý | 16h |  | 800 |  |
| 22 | 3.5 | Kết hợp phản hồi vào đặc tả chức năng |  | 1d | 2022-02-14 | 2022-02-15 | 21 |  |  | 0d | Ban quản lý | 8h |  | 400 |  |
| 23 | 3.6 | Nhận được sự chấp thuận để tiếp tục |  | 4h | 2022-02-15 | 2022-02-15 | 22 |  |  | 0d | Nguyễn Văn An; Ban quản lý | 8h |  | 360 |  |
| 24 | 3.7 | Thiết kế hoàn thành | milestone | 0d | 2022-02-15 | 2022-02-15 | 23 |  |  | 0d |  |  |  |  |  |

| ID | WBS | Task | Type | Duration | Start | Finish | Predecessors | Total slack | Free slack | Resources | Work | Cost |
| --- | --- | --- | --- | --- | --- | --- | --- | --- | --- | --- | --- | --- |
| 25 | 4 | **Phát triển** |  | 21.75d | 2022-02-16 | 2022-03-17 |  | 0d |  |  | 872h | 26,160 |
| 26 | 4.1 | Xem lại đặc tả chức năng |  | 1d | 2022-02-16 | 2022-02-16 | 24 | 0d |  | Trần Hồng Hạnh | 8h | 240 |
| 27 | 4.2 | Xác định các thông số thiết kế mô-đun/phân cấp |  | 1d | 2022-02-17 | 2022-02-17 | 26 | 0d |  | Lâm Thanh Sang | 8h | 240 |
| 28 | 4.3 | Chỉ định nhân viên phát triển |  | 1d | 2022-02-18 | 2022-02-18 | 27 | 0d |  | Trần Hồng Hạnh; Lâm Thanh Sang | 16h | 480 |
| 29 | 4.4 | Phát triển mã nguồn |  | 15d | 2022-02-21 | 2022-03-11 | 28 | 0d |  | Lâm Thanh Sang; Huỳnh Tấn Phát; Đỗ Tiến Hoàng | 360h | 10,800 |
| 30 | 4.5 | Kiểm thử của người phát triển (gỡ lỗi chính) |  | 15d | 2022-02-24 | 2022-03-17 | 29FS-11.25d | 0d |  | Trương Minh Hảo; Mai Văn Liêm; Đoàn Tiến Thuận; Trần Hồng Hạnh | 480h | 14,400 |
| 31 | 4.6 | Phát triển hoàn thành | milestone | 0d | 2022-03-17 | 2022-03-17 | 30 | 0d |  |  |  |  |
| 32 | 5 | **Kiểm thử** |  | 48.75d | 2022-02-16 | 2022-04-25 |  | 15d |  |  | 496h | 12,880 |
| 33 | 5.1 | Xây dựng kế hoạch kiểm thử đơn vị bằng cách sử dụng đặc tả sản phẩm |  | 4d | 2022-02-16 | 2022-02-21 | 24 | 17.75d |  | Nguyễn Thanh Bình | 32h | 800 |
| 34 | 5.2 | Phát triển kế hoạch kiểm thử tích hợp bằng cách sử dụng đặc tả của sản phẩm |  | 4d | 2022-02-16 | 2022-02-21 | 24 | 59.75d |  | Nguyễn Thanh Bình | 32h | 800 |
| 35 | 5.3 | **Kiểm thử đơn vị** |  | 15d | 2022-03-17 | 2022-04-07 |  | 0d |  |  | 240h | 6,000 |
| 36 | 5.3.1 | Xem lại mã mô-đun |  | 5d | 2022-03-17 | 2022-03-24 | 33, 31 | 0d |  | Nguyễn Thanh Bình; Trần Hoàng Hà | 80h | 2,000 |
| 37 | 5.3.2 | Kiểm thử các mô-đun thành phần đối với đặc tả sản phẩm |  | 2d | 2022-03-24 | 2022-03-28 | 31, 36 | 0d |  | Trần Hoàng Hà; Lê Thanh Thảo | 32h | 800 |
| 38 | 5.3.3 | Xác định các điểm bất thường đối với đặc tả sản phẩm |  | 3d | 2022-03-28 | 2022-03-31 | 37 | 0d |  | Trần Hoàng Hà; Lê Thanh Thảo | 48h | 1,200 |
| 39 | 5.3.4 | Sửa đổi mã nguồn |  | 3d | 2022-03-31 | 2022-04-05 | 38 | 0d |  | Trần Hoàng Hà; Lê Thanh Thảo | 48h | 1,200 |
| 40 | 5.3.5 | Kiểm thử lại mã đã sửa đổi |  | 2d | 2022-04-05 | 2022-04-07 | 39 | 0d |  | Trần Hoàng Hà; Lê Thanh Thảo | 32h | 800 |
| 41 | 5.3.6 | Kiểm thử đơn vị hoàn thành | milestone | 0d | 2022-04-07 | 2022-04-07 | 40 | 0d |  |  |  |  |
| 42 | 5.4 | **Kiểm thử tích hợp** |  | 12d | 2022-04-07 | 2022-04-25 |  | 0d |  |  | 192h | 5,280 |
| 43 | 5.4.1 | Kiểm thử tích hợp mô-đun |  | 5d | 2022-04-07 | 2022-04-14 | 41 | 0d |  | Nguyễn Thành Tuấn; Dương Nhật Nam | 80h | 2,200 |
| 44 | 5.4.2 | Xác định các điểm bất thường đối với đặc tả |  | 2d | 2022-04-14 | 2022-04-18 | 43 | 0d |  | Nguyễn Thành Tuấn; Dương Nhật Nam | 32h | 880 |
| 45 | 5.4.3 | Sửa đổi mã nguồn |  | 3d | 2022-04-18 | 2022-04-21 | 44 | 0d |  | Nguyễn Thành Tuấn; Dương Nhật Nam | 48h | 1,320 |
| 46 | 5.4.4 | Kiểm thử lại mã đã sửa đổi |  | 2d | 2022-04-21 | 2022-04-25 | 45 | 0d |  | Nguyễn Thành Tuấn; Dương Nhật Nam | 32h | 880 |
| 47 | 5.4.5 | Kiểm thử tích hợp hoàn thành | milestone | 0d | 2022-04-25 | 2022-04-25 | 46 | 0d |  |  |  |  |
| 48 | 6 | **Tập huấn** |  | 45.75d | 2022-02-16 | 2022-04-20 |  | 3d |  |  | 640h | 17,080 |
| 49 | 6.1 | Phát triển đặc tả tập huấn cho người dùng cuối |  | 3d | 2022-02-16 | 2022-02-18 | 24 | 21.75d | 18.75d | Phạm Minh Phương | 24h | 720 |
| 50 | 6.2 | Xây dựng đặc tả tập huấn cho nhân viên hỗ trợ của bộ phận trợ giúp |  | 3d | 2022-02-16 | 2022-02-18 | 24 | 21.75d | 18.75d | Trương Thành Nhân | 24h | 600 |
| 51 | 6.3 | Xác định phương pháp tập huấn (tập huấn dựa trên máy tính, lớp học, v.v.) |  | 2d | 2022-02-16 | 2022-02-17 | 24 | 22.75d | 19.75d | Mai Diễm Trinh | 16h | 400 |
| 52 | 6.4 | Xây dựng tài liệu tập huấn |  | 3w | 2022-03-17 | 2022-04-07 | 49, 31, 50, 51 | 3d | 0d | Mai Diễm Trinh; Phạm Minh Phương; Trương Thành Nhân | 360h | 9,600 |
| 53 | 6.5 | Tập huấn thực hiện nghiên cứu về khả năng sử dụng |  | 4d | 2022-04-07 | 2022-04-13 | 52 | 3d | 0d | Mai Diễm Trinh; Phạm Minh Phương; Trương Thành Nhân | 96h | 2,560 |
| 54 | 6.6 | Hoàn thiện tài liệu tập huấn |  | 3d | 2022-04-13 | 2022-04-18 | 53 | 3d | 0d | Mai Diễm Trinh; Phạm Minh Phương; Trương Thành Nhân | 72h | 1,920 |
| 55 | 6.7 | Xây dựng cơ chế phân phối tập huấn |  | 2d | 2022-04-18 | 2022-04-20 | 54 | 3d | 0d | Mai Diễm Trinh; Phạm Minh Phương; Trương Thành Nhân | 48h | 1,280 |
| 56 | 6.8 | Tài liệu tập huấn hoàn thành | milestone | 0d | 2022-04-20 | 2022-04-20 | 55 | 3d |  |  |  |  |

| ID | WBS | Task | Type | Duration | Start | Finish | Predecessors | Complete | Remaining | Total slack | Free slack | Resources | Work | Actual work | Cost | Actual cost |
| --- | --- | --- | --- | --- | --- | --- | --- | --- | --- | --- | --- | --- | --- | --- | --- | --- |
| 57 | 7 | **Tài liệu** |  | 30.5d | 2022-02-16 | 2022-03-30 |  |  |  | 18.25d |  |  | 664h |  | 16,600 |  |
| 58 | 7.1 | Phát triển đặc tả Trợ giúp |  | 1d | 2022-02-16 | 2022-02-16 | 24 |  |  | 27.75d | 9.5d | Phan Minh Nhật | 8h |  | 200 |  |
| 59 | 7.2 | Phát triển hệ thống Trợ giúp |  | 3w | 2022-03-02 | 2022-03-23 | 58, 29FS-7.5d |  |  | 18.25d | 0d | Phan Minh Nhật; Lương Thùy Trang | 240h |  | 6,000 |  |
| 60 | 7.3 | Xem lại tài liệu Trợ giúp |  | 3d | 2022-03-23 | 2022-03-28 | 59 |  |  | 18.25d | 0d | Lương Thùy Trang; Trần Công Minh | 48h |  | 1,200 |  |
| 61 | 7.4 | Kết hợp phản hồi tài liệu Trợ giúp |  | 2d | 2022-03-28 | 2022-03-30 | 60 |  |  | 18.25d | 0d | Lương Thùy Trang; Trần Công Minh | 32h |  | 800 |  |
| 62 | 7.5 | Phát triển đặc tả hướng dẫn sử dụng |  | 2d | 2022-02-16 | 2022-02-17 | 24 |  |  | 27.75d | 8.5d | Nguyễn Thanh Hoài; Nguyễn Chí Hiếu | 32h |  | 800 |  |
| 63 | 7.6 | Phát triển hướng dẫn sử dụng |  | 3w | 2022-03-02 | 2022-03-23 | 62, 29FS-7.5d |  |  | 19.25d | 0d | Nguyễn Thanh Hoài; Nguyễn Chí Hiếu | 240h |  | 6,000 |  |
| 64 | 7.7 | Xem lại tất cả tài liệu người dùng |  | 2d | 2022-03-23 | 2022-03-25 | 63 |  |  | 19.25d | 0d | Nguyễn Thanh Hoài; Phan Minh Nhật | 32h |  | 800 |  |
| 65 | 7.8 | Kết hợp phản hồi tài liệu người dùng |  | 2d | 2022-03-25 | 2022-03-29 | 64 |  |  | 19.25d | 1d | Nguyễn Thanh Hoài; Phan Minh Nhật | 32h |  | 800 |  |
| 66 | 7.9 | Tài liệu hoàn thành | milestone | 0d | 2022-03-30 | 2022-03-30 | 65, 61 |  |  | 18.25d |  |  |  |  |  |  |
| 67 | 8 | **Thử nghiệm** |  | 70.25d | 2022-01-26 A | 2022-05-06 |  | 13% | 60.88d | 0d |  |  | 240h | 9.6h | 6,720 | 368 |
| 68 | 8.1 | Xác định nhóm kiểm thử |  | 1d | 2022-01-26 A | 2022-01-27 A | 16 | 100% |  |  |  | Nguyễn Văn An | 8h | 8h | 320 | 320 |
| 69 | 8.2 | Phát triển cơ chế phân phối phần mềm |  | 1d | 2022-01-27 A | 2022-01-28 | 68 | 20% | 0.8d | 61.25d |  | Trương Minh Hảo | 8h | 1.6h | 240 | 48 |
| 70 | 8.3 | Cài đặt/triển khai phần mềm |  | 1d | 2022-04-25 | 2022-04-26 | 47, 69, 66, 56 |  |  | 0d |  | Trương Minh Hảo; Phạm Minh Phương; Phan Minh Nhật; Trần Hoàng Khải | 32h |  | 880 |  |
| 71 | S | Nhận phản hồi của người dùng |  | 1w | 2022-04-26 | 2022-05-05 | 70 |  |  | 0d |  | Trương Minh Hảo; Phạm Minh Phương; Phan Minh Nhật; Trần Hoàng Khải | 160h |  | 4,400 |  |
| 72 | 8.5 | Đánh giá thông tin kiểm thử |  | 1d | 2022-05-05 | 2022-05-06 | 71 |  |  | 0d |  | Trương Minh Hảo; Phạm Minh Phương; Phan Minh Nhật; Trần Hoàng Khải | 32h |  | 880 |  |
| 73 | 8.6 | Việc thử nghiệm hoàn thành | milestone | 0d | 2022-05-06 | 2022-05-06 | 72 |  |  | 0d |  |  |  |  |  |  |
| 74 | 9 | **Triển khai** |  | 5d | 2022-05-06 | 2022-05-13 |  |  |  | 0d |  |  | 80h |  | 2,120 |  |
| 75 | 9.1 | Xác định chiến lược triển khai cuối cùng |  | 1d | 2022-05-06 | 2022-05-09 | 73 |  |  | 0d |  | Phạm Minh Phương; Trần Hoàng Khải | 16h |  | 440 |  |
| 76 | 9.2 | Phát triển phương pháp triển khai |  | 1d | 2022-05-09 | 2022-05-10 | 75 |  |  | 0d |  | Phạm Minh Phương; Trần Hoàng Khải | 16h |  | 440 |  |
| 77 | 9.3 | Bảo đảm tài nguyên triển khai |  | 1d | 2022-05-10 | 2022-05-11 | 76 |  |  | 0d |  | Phạm Minh Phương; Trần Hoàng Khải | 16h |  | 440 |  |
| 78 | 9.4 | Tập huấn nhân viên hỗ trợ |  | 1d | 2022-05-11 | 2022-05-12 | 77 |  |  | 0d |  | Trương Thành Nhân; Mai Diễm Trinh | 16h |  | 400 |  |
| 79 | 9.5 | Triển khai phần mềm |  | 1d | 2022-05-12 | 2022-05-13 | 78 |  |  | 0d |  | Trương Thành Nhân; Mai Diễm Trinh | 16h |  | 400 |  |
| 80 | 9.6 | Việc triển khai hoàn thành | milestone | 0d | 2022-05-13 | 2022-05-13 | 79 |  |  | 0d |  |  |  |  |  |  |

| ID | WBS | Task | Type | Duration | Start | Finish | Predecessors | Total slack | Resources | Work | Cost |
| --- | --- | --- | --- | --- | --- | --- | --- | --- | --- | --- | --- |
| 81 | 10 | **Đánh giá sau triển khai** |  | 3d | 2022-05-13 | 2022-05-18 |  | 0d |  | 24h | 960 |
| 82 | 10.1 | Ghi lại những bài học kinh nghiệm |  | 1d | 2022-05-13 | 2022-05-16 | 80 | 0d | Nguyễn Văn An | 8h | 320 |
| 83 | 10.2 | Phân phối cho các thành viên trong nhóm |  | 1d | 2022-05-16 | 2022-05-17 | 82 | 0d | Nguyễn Văn An | 8h | 320 |
| 84 | 10.3 | Tập nhóm bảo trì phần mềm |  | 1d | 2022-05-17 | 2022-05-18 | 83 | 0d | Nguyễn Văn An | 8h | 320 |
| 85 | 10.4 | Đánh giá sau triển khai hoàn thành | milestone | 0d | 2022-05-18 | 2022-05-18 | 84 | 0d |  |  |  |
| 86 | 11 | Mẫu phát triển phần mềm hoàn thành | milestone | 0d | 2022-05-18 | 2022-05-18 | 85 | 0d |  |  |  |
