# Lịch sách dành cho trẻ em

Schedule from MS Project, 2015-04-06 to 2015-11-26, costs in $.
Lucerne Publishing

## Calendars

- Standard: Mon-Fri 08:00-12:00, 13:00-17:00; Sat-Sun off.
- Monday-Wednesday: Mon-Wed 08:00-12:00, 13:00-17:00; Thu-Sun off.

## Resources

| Resource | Group | Unit | Rate |
| --- | --- | --- | --- |
| Trần Thanh Điện | Biên tập viên |  | 52.5 |
| Biên tập viên | Biên tập viên |  | 45 |
| Phan Minh Khang | Bộ phận thiết kế |  | 75.5 |
| Huỳnh Phương Nam | Biên tập viên |  | 38.75 |
| Lê Xuân Thy | Biên tập viên |  | 63.25 |
| Phạm Tấn Hoàng | Biên tập viên |  | 42 |
| Đoàn Minh Hòa | Bộ phận thiết kế |  | 70 |
| Dịch vụ in | Bộ phận sản xuất |  |  |
| Đi lại | Bộ phận khác |  |  |
| Tạ Thanh Hải | Bộ phận khác |  |  |
| Dịch vụ pha màu | Bộ phận sản xuất |  |  |
| Bản in thử | Bộ phận sản xuất | copies | 15 |

## Schedule

| ID | WBS | Task | Type | Duration | Start | Finish | Predecessors | Baseline start | Baseline finish | Baseline duration | Total slack | Constraint | Deadline | Resources | Work | Cost | Baseline cost | Editorial Focus |
| --- | --- | --- | --- | --- | --- | --- | --- | --- | --- | --- | --- | --- | --- | --- | --- | --- | --- | --- |
| 1 | 1 | **Họp nhân viên biên tập** |  | 60.12d | 2015-04-13 08:00 | 2015-07-06 09:00 |  | 2015-04-13 08:00 | 2015-07-06 09:00 | 60.12d | 103.75d |  |  |  | 45.5h | 2,223 | 2,223 |  |
| 2 | 1.1 | Họp nhân viên biên tập lần 1 |  | 1h | 2015-04-13 08:00 | 2015-04-13 09:00 |  | 2015-04-13 08:00 | 2015-04-13 09:00 | 1h | 163.75d | start no earlier than 2015-04-13 08:00 |  | Trần Thanh Điện; Phạm Tấn Hoàng; Huỳnh Phương Nam; Phan Minh Khang [50%] | 3.5h | 171 | 171 |  |
| 3 | 1.2 | Họp nhân viên biên tập lần 2 |  | 1h | 2015-04-20 08:00 | 2015-04-20 09:00 |  | 2015-04-20 08:00 | 2015-04-20 09:00 | 1h | 158.75d | start no earlier than 2015-04-20 08:00 |  | Trần Thanh Điện; Phạm Tấn Hoàng; Huỳnh Phương Nam; Phan Minh Khang [50%] | 3.5h | 171 | 171 |  |
| 4 | 1.3 | Họp nhân viên biên tập lần 3 |  | 1h | 2015-04-27 08:00 | 2015-04-27 09:00 |  | 2015-04-27 08:00 | 2015-04-27 09:00 | 1h | 153.75d | start no earlier than 2015-04-27 08:00 |  | Trần Thanh Điện; Phạm Tấn Hoàng; Huỳnh Phương Nam; Phan Minh Khang [50%] | 3.5h | 171 | 171 |  |
| 5 | 1.4 | Họp nhân viên biên tập lần 4 |  | 1h | 2015-05-04 08:00 | 2015-05-04 09:00 |  | 2015-05-04 08:00 | 2015-05-04 09:00 | 1h | 148.75d | start no earlier than 2015-05-04 08:00 |  | Trần Thanh Điện; Phạm Tấn Hoàng; Huỳnh Phương Nam; Phan Minh Khang [50%] | 3.5h | 171 | 171 |  |
| 6 | 1.5 | Họp nhân viên biên tập lần 5 |  | 1h | 2015-05-11 08:00 | 2015-05-11 09:00 |  | 2015-05-11 08:00 | 2015-05-11 09:00 | 1h | 143.75d | start no earlier than 2015-05-11 08:00 |  | Trần Thanh Điện; Phạm Tấn Hoàng; Huỳnh Phương Nam; Phan Minh Khang [50%] | 3.5h | 171 | 171 |  |
| 7 | 1.6 | Họp nhân viên biên tập lần 6 |  | 1h | 2015-05-18 08:00 | 2015-05-18 09:00 |  | 2015-05-18 08:00 | 2015-05-18 09:00 | 1h | 138.75d | start no earlier than 2015-05-18 08:00 |  | Trần Thanh Điện; Phạm Tấn Hoàng; Huỳnh Phương Nam; Phan Minh Khang [50%] | 3.5h | 171 | 171 |  |
| 8 | 1.7 | Họp nhân viên biên tập lần 7 |  | 1h | 2015-05-25 08:00 | 2015-05-25 09:00 |  | 2015-05-25 08:00 | 2015-05-25 09:00 | 1h | 133.75d | start no earlier than 2015-05-25 08:00 |  | Trần Thanh Điện; Phạm Tấn Hoàng; Huỳnh Phương Nam; Phan Minh Khang [50%] | 3.5h | 171 | 171 |  |
| 9 | 1.8 | Họp nhân viên biên tập lần 8 |  | 1h | 2015-06-01 08:00 | 2015-06-01 09:00 |  | 2015-06-01 08:00 | 2015-06-01 09:00 | 1h | 128.75d | start no earlier than 2015-06-01 08:00 |  | Trần Thanh Điện; Phạm Tấn Hoàng; Huỳnh Phương Nam; Phan Minh Khang [50%] | 3.5h | 171 | 171 |  |
| 10 | 1.9 | Họp nhân viên biên tập lần 9 |  | 1h | 2015-06-08 08:00 | 2015-06-08 09:00 |  | 2015-06-08 08:00 | 2015-06-08 09:00 | 1h | 123.75d | start no earlier than 2015-06-08 08:00 |  | Trần Thanh Điện; Phạm Tấn Hoàng; Huỳnh Phương Nam; Phan Minh Khang [50%] | 3.5h | 171 | 171 |  |
| 11 | 1.10 | Họp nhân viên biên tập lần 10 |  | 1h | 2015-06-15 08:00 | 2015-06-15 09:00 |  | 2015-06-15 08:00 | 2015-06-15 09:00 | 1h | 118.75d | start no earlier than 2015-06-15 08:00 |  | Trần Thanh Điện; Phạm Tấn Hoàng; Huỳnh Phương Nam; Phan Minh Khang [50%] | 3.5h | 171 | 171 |  |
| 12 | 1.11 | Họp nhân viên biên tập lần 11 |  | 1h | 2015-06-22 08:00 | 2015-06-22 09:00 |  | 2015-06-22 08:00 | 2015-06-22 09:00 | 1h | 113.75d | start no earlier than 2015-06-22 08:00 |  | Trần Thanh Điện; Phạm Tấn Hoàng; Huỳnh Phương Nam; Phan Minh Khang [50%] | 3.5h | 171 | 171 |  |
| 13 | 1.12 | Họp nhân viên biên tập lần 12 |  | 1h | 2015-06-29 08:00 | 2015-06-29 09:00 |  | 2015-06-29 08:00 | 2015-06-29 09:00 | 1h | 108.75d | start no earlier than 2015-06-29 08:00 |  | Trần Thanh Điện; Phạm Tấn Hoàng; Huỳnh Phương Nam; Phan Minh Khang [50%] | 3.5h | 171 | 171 |  |
| 14 | 1.13 | Họp nhân viên biên tập lần 13 |  | 1h | 2015-07-06 08:00 | 2015-07-06 09:00 |  | 2015-07-06 08:00 | 2015-07-06 09:00 | 1h | 103.75d | start no earlier than 2015-07-06 08:00 |  | Trần Thanh Điện; Phạm Tấn Hoàng; Huỳnh Phương Nam; Phan Minh Khang [50%] | 3.5h | 171 | 171 |  |
| 15 | 2 | **Sự tiêp nhận** |  | 35.5d | 2015-04-06 08:00 | 2015-05-25 12:00 |  | 2015-04-06 08:00 | 2015-05-25 12:00 | 35.5d | 0d |  |  |  | 444h | 18,264 | 18,264 |  |
| 16 | 2.1 | Nhận bản thảo | milestone | 0d | 2015-04-06 08:00 | 2015-04-06 08:00 |  | 2015-04-06 08:00 | 2015-04-06 08:00 | 0d | 0d |  |  |  |  |  |  |  |
| 17 | 2.2 | Biên tập nội dung |  | 15d | 2015-04-06 08:00 | 2015-04-30 10:00 | 16 | 2015-04-06 08:00 | 2015-04-30 10:00 | 15d | 0d |  |  | Trần Thanh Điện | 120h | 6,300 | 6,300 | Full developmental edit |
| 18 | 2.3 | Đánh giá tác phẩm gốc |  | 10.25d | 2015-04-23 10:00 | 2015-05-07 12:00 | 17FS-5d | 2015-04-23 10:00 | 2015-05-07 12:00 | 10.25d | 0d |  |  | Huỳnh Phương Nam; Lê Xuân Thy | 164h | 8,364 | 8,364 |  |
| 19 | 2.4 | Đánh giá của tác giả về nội dung biên tập |  | 12d | 2015-05-07 13:00 | 2015-05-25 12:00 | 17, 18 | 2015-05-07 13:00 | 2015-05-25 12:00 | 12d | 0d |  |  | Tạ Thanh Hải; Biên tập viên | 160h | 3,600 | 3,600 | Incorp must-fix issues |
| 20 | 2.5 | Bàn giao cho bộ phận biên tập | milestone | 0d | 2015-05-25 12:00 | 2015-05-25 12:00 | 19 | 2015-05-25 12:00 | 2015-05-25 12:00 | 0d | 0d |  | 2015-05-29 17:00 | Trần Thanh Điện |  |  |  |  |
| 21 | 3 | **Biên tập** |  | 29.12d | 2015-05-25 13:00 | 2015-07-03 14:00 | 15 | 2015-05-25 13:00 | 2015-07-03 14:00 | 29.12d | 0d |  |  |  | 400h | 15,670 | 15,670 |  |
| 22 | 3.1 | Sắp xếp bản thảo cho bản sao |  | 5.12d | 2015-05-25 13:00 | 2015-06-01 14:00 |  | 2015-05-25 13:00 | 2015-06-01 14:00 | 5.12d | 0d |  |  | Huỳnh Phương Nam; Phan Minh Khang [50%] | 60h | 3,060 | 3,060 | Address outstanding line edit issues |
| 23 | 3.2 | Bản sao |  | 11.25d | 2015-06-01 14:00 | 2015-06-16 16:00 | 22 | 2015-06-01 14:00 | 2015-06-16 16:00 | 11.25d | 0d |  |  | Biên tập viên [200%] | 180h | 8,100 | 8,100 | Style Guide compliance |
| 24 | 3.3 | Đánh giá của tác giả về bản sao |  | 10d | 2015-06-16 16:00 | 2015-06-30 16:00 | 23 | 2015-06-16 16:00 | 2015-06-30 16:00 | 10d | 0d |  |  | Tạ Thanh Hải; Biên tập viên [25%] | 100h | 900 | 900 | Incorp must-fix issues |
| 25 | 3.4 | Kết hợp bảo sao |  | 5.12d | 2015-06-26 11:00 | 2015-07-03 14:00 | 24FS-2.5% | 2015-06-26 11:00 | 2015-07-03 14:00 | 5.12d | 0d |  |  | Trần Thanh Điện; Phan Minh Khang [50%] | 60h | 3,610 | 3,610 | Incorp must-fix issues |
| 26 | 3.5 | Bàn giao cho bộ phận sản xuất | milestone | 0d | 2015-07-03 14:00 | 2015-07-03 14:00 | 25 | 2015-07-03 14:00 | 2015-07-03 14:00 | 0d | 0d |  |  | Huỳnh Phương Nam |  |  |  |  |

| ID | WBS | Task | Type | Duration | Start | Finish | Predecessors | Baseline start | Baseline finish | Baseline duration | Total slack | Free slack | Constraint | Calendar | Resources | Work | Cost | Baseline cost |
| --- | --- | --- | --- | --- | --- | --- | --- | --- | --- | --- | --- | --- | --- | --- | --- | --- | --- | --- |
| 27 | 4 | **Thiết kế và Sản xuất** |  | 58.25d | 2015-07-03 14:00 | 2015-09-23 16:00 | 21 | 2015-07-03 14:00 | 2015-09-23 16:00 | 58.25d | 0d |  |  |  |  | 888h | 46,679 | 46,679 |
| 28 | 4.1 | Thiết lập trang |  | 15d | 2015-07-03 14:00 | 2015-07-24 14:00 |  | 2015-07-03 14:00 | 2015-07-24 14:00 | 15d | 0d |  |  |  | Lê Xuân Thy | 120h | 7,590 | 7,590 |
| 29 | 4.2 | Thiết kế minh họa bên trong |  | 15.25d | 2015-07-03 14:00 | 2015-07-24 16:00 | 28SS | 2015-07-03 14:00 | 2015-07-24 16:00 | 15.25d | 0d |  |  |  | Đoàn Minh Hòa; Huỳnh Phương Nam | 240h | 13,050 | 13,050 |
| 30 | 4.3 | **Đánh giá các trang lần thứ nhất** |  | 30d | 2015-07-24 16:00 | 2015-09-04 16:00 | 29 | 2015-07-24 16:00 | 2015-09-04 16:00 | 30d | 0d |  |  |  |  | 320h | 13,860 | 13,860 |
| 31 | 4.3.1 | Hiệu đính và lập chỉ mục |  | 10d | 2015-07-24 16:00 | 2015-08-07 16:00 |  | 2015-07-24 16:00 | 2015-08-07 16:00 | 10d | 0d |  | start no earlier than 2015-07-17 08:00 |  | Tạ Thanh Hải; Biên tập viên | 100h | 900 | 900 |
| 32 | 4.3.2 | Kết hợp đánh giá các trang lần thứ nhất |  | 10d | 2015-08-07 16:00 | 2015-08-21 16:00 | 31 | 2015-08-07 16:00 | 2015-08-21 16:00 | 10d | 0d |  |  |  | Huỳnh Phương Nam; Phan Minh Khang [50%] | 120h | 6,120 | 6,120 |
| 33 | 4.3.3 | Gửi các trang đã được hiệu đính đến bộ phận sản xuất | milestone | 0d | 2015-08-21 16:00 | 2015-08-21 16:00 | 32 | 2015-08-21 16:00 | 2015-08-21 16:00 | 0d | 0d |  |  |  | Huỳnh Phương Nam |  |  |  |
| 34 | 4.3.4 | Nhập các chỉnh sửa trang và lập chỉ mục |  | 5d | 2015-08-21 16:00 | 2015-08-28 16:00 | 33 | 2015-08-21 16:00 | 2015-08-28 16:00 | 5d | 0d |  |  |  | Lê Xuân Thy; Phan Minh Khang [50%] | 60h | 4,040 | 4,040 |
| 35 | 4.3.5 | Thiết kế trang bìa |  | 5d | 2015-08-28 16:00 | 2015-09-04 16:00 | 34 | 2015-08-28 16:00 | 2015-09-04 16:00 | 5d | 0d |  |  |  | Đoàn Minh Hòa | 40h | 2,800 | 2,800 |
| 36 | 4.4 | **Đánh giá các trang lần thứ hai** |  | 13d | 2015-09-04 16:00 | 2015-09-23 16:00 |  | 2015-09-04 16:00 | 2015-09-23 16:00 | 13d | 0d |  |  |  |  | 120h | 6,345 | 6,345 |
| 37 | 4.4.1 | In thử và đánh giá |  | 6.5d | 2015-09-04 16:00 | 2015-09-15 11:00 | 35 | 2015-09-04 16:00 | 2015-09-15 11:00 | 6.5d | 0d |  |  |  | Huỳnh Phương Nam | 40h | 1,800 | 1,800 |
| 38 | 4.4.2 | Gửi các trang đã được hiệu đính đến bộ phận sản xuất | milestone | 0d | 2015-09-15 11:00 | 2015-09-15 11:00 | 37 | 2015-09-15 11:00 | 2015-09-15 11:00 | 0d | 0d |  |  |  | Huỳnh Phương Nam |  |  |  |
| 39 | 4.4.3 | Đánh giá cuối cùng |  | 5d | 2015-09-16 16:00 | 2015-09-23 16:00 | 38 | 2015-09-16 16:00 | 2015-09-23 16:00 | 5d | 0d |  |  |  | Lê Xuân Thy; Huỳnh Phương Nam [50%]; Trần Thanh Điện [50%]; Bản in thử [20 copies] | 80h | 4,545 | 4,545 |
| 40 | 4.5 | **Thiết kế trang web đồng hành của sách** |  | 10d | 2015-09-04 16:00 | 2015-09-18 16:00 | 30 | 2015-09-04 16:00 | 2015-09-18 16:00 | 10d | 3d |  |  |  |  | 88h | 5,834 | 5,834 |
| 41 | 4.5.1 | Tạo mô hình |  | 4.5d | 2015-09-04 16:00 | 2015-09-16 16:00 |  | 2015-09-04 16:00 | 2015-09-16 16:00 | 4.5d | 3d | 0d |  |  | Đoàn Minh Hòa; Huỳnh Phương Nam | 48h | 2,610 | 2,610 |
| 42 | 4.5.2 | Đánh giá với tác giả |  | 2d | 2015-09-16 16:00 | 2015-09-18 16:00 | 41 | 2015-09-16 16:00 | 2015-09-18 16:00 | 2d | 3d |  |  |  | Đoàn Minh Hòa; Tạ Thanh Hải; Đi lại [0.1%]; Phan Minh Khang [50%] | 40h | 3,224 | 3,224 |
| 43 | 5 | **Chuẩn bị màu và in** |  | 46d | 2015-09-23 16:00 | 2015-11-26 16:00 | 40 | 2015-09-23 16:00 | 2015-11-26 16:00 | 46d | 0d |  |  |  |  | 328h | 5,310 | 5,310 |
| 44 | 5.1 | Gửi đến bộ phận pha màu |  | 1d | 2015-09-23 16:00 | 2015-09-28 16:00 | 36 | 2015-09-23 16:00 | 2015-09-28 16:00 | 1d | 0d |  |  | Monday-Wednesday | Huỳnh Phương Nam | 8h | 310 | 310 |
| 45 | 5.2 | Tạo các bản in |  | 10d | 2015-09-28 16:00 | 2015-10-12 16:00 | 44 | 2015-09-28 16:00 | 2015-10-12 16:00 | 10d | 0d |  |  |  | Dịch vụ pha màu | 80h | 5,000 | 5,000 |
| 46 | 5.3 | In và vận chuyển |  | 30d | 2015-10-15 16:00 | 2015-11-26 16:00 | 45FS+3d | 2015-10-15 16:00 | 2015-11-26 16:00 | 30d | 0d |  |  |  | Dịch vụ in | 240h |  |  |
| 47 | 6 | **Chuẩn bị ra mắt sách** |  | 22d | 2015-09-28 16:00 | 2015-10-28 16:00 |  | 2015-09-28 16:00 | 2015-10-28 16:00 | 22d | 21d |  |  |  |  | 212h | 9,442 | 9,442 |
| 48 | 6.1 | Lập kế hoạch ra mắt |  | 5d | 2015-09-28 16:00 | 2015-10-05 16:00 | 44 | 2015-09-28 16:00 | 2015-10-05 16:00 | 5d | 21d | 0d |  |  | Trần Thanh Điện [50%]; Lê Xuân Thy | 36h | 2,062 | 2,062 |
| 49 | 6.2 | Chỉ định các thành viên trong nhóm khởi động |  | 1d | 2015-10-05 16:00 | 2015-10-06 16:00 | 48 | 2015-10-05 16:00 | 2015-10-06 16:00 | 1d | 21d | 0d |  |  | Trần Thanh Điện | 8h | 420 | 420 |
| 50 | 6.3 | Hoàn thành bảng câu hỏi về tác giả |  | 5d | 2015-10-06 16:00 | 2015-10-13 16:00 | 49 | 2015-10-06 16:00 | 2015-10-13 16:00 | 5d | 21d | 0d |  |  | Huỳnh Phương Nam; Tạ Thanh Hải; Đi lại [0.1%] | 80h | 3,550 | 3,550 |
| 51 | 6.4 | Lên lịch phỏng vấn tác giả |  | 1d | 2015-10-13 16:00 | 2015-10-14 16:00 | 50 | 2015-10-13 16:00 | 2015-10-14 16:00 | 1d | 21d | 0d |  |  | Huỳnh Phương Nam | 8h | 310 | 310 |
| 52 | 6.5 | Thiết kế và đặt hàng tài liệu tiếp thị |  | 10d | 2015-10-14 16:00 | 2015-10-28 16:00 | 51 | 2015-10-14 16:00 | 2015-10-28 16:00 | 10d | 21d |  |  |  | Huỳnh Phương Nam | 80h | 3,100 | 3,100 |
