# Lịch sách cho trẻ em

Schedule from MS Project, 2015-04-06 to 2015-12-03, costs in $, A marks actual dates.
Lucerne Publishing

## Calendars

- Standard: Mon-Fri 08:00-12:00, 13:00-17:00; Sat-Sun off.
- Monday-Wednesday: Mon-Wed 08:00-12:00, 13:00-17:00; Thu-Sun off.

## Resources

| Resource | Group | Unit | Rate |
| --- | --- | --- | --- |
| Trần Thanh Điện | Biên tập viên |  | 52.5 |
| Biên tập viên | Biên tập viên |  | 45 |
| Phan Minh Khang | Bộ phận thiết kế |  | 75.5 |
| Huỳnh Phương Nam | Biên tập viên |  | 38.75 |
| Lê Xuân Thy | Biên tập viên |  | 63.25 |
| Phạm Tấn Hoàng | Biên tập viên |  | 42 |
| Đoàn Minh Hòa | Bộ phận thiết kế |  | 70 |
| Dịch vụ in | Bộ phận sản xuất |  |  |
| Đi lại | Bộ phận khác |  |  |
| Tạ Thanh Hải | Bộ phận khác |  |  |
| Dịch vụ pha màu | Bộ phận sản xuất |  |  |
| Bản in thử | Bộ phận sản xuất | copies | 15 |

## Schedule

| ID | WBS | Task | Type | Duration | Start | Finish | Predecessors | Complete | Remaining | Baseline start | Baseline finish | Baseline duration | Total slack | Constraint | Deadline | Resources | Work | Actual work | Cost | Baseline cost | Actual cost | Editorial Focus |
| --- | --- | --- | --- | --- | --- | --- | --- | --- | --- | --- | --- | --- | --- | --- | --- | --- | --- | --- | --- | --- | --- | --- |
| 1 | 1 | **Họp nhân viên biên tập** |  | 82.12d | 2015-04-13 A | 2015-08-05 |  | 37% | 51.87d | 2015-04-13 | 2015-07-06 | 60.12d | 86.88d |  |  |  | 45.5h | 24.5h | 2,223 | 2,223 | 1,197 |  |
| 2 | 1.1 | Họp nhân viên biên tập lần 1 |  | 1h | 2015-04-13 A | 2015-04-13 A |  | 100% |  | 2015-04-13 | 2015-04-13 | 1h |  | start no earlier than 2015-04-13 |  | Trần Thanh Điện; Phạm Tấn Hoàng; Huỳnh Phương Nam; Phan Minh Khang [50%] | 3.5h | 3.5h | 171 | 171 | 171 |  |
| 3 | 1.2 | Họp nhân viên biên tập lần 2 |  | 1h | 2015-04-20 A | 2015-04-20 A |  | 100% |  | 2015-04-20 | 2015-04-20 | 1h |  | start no earlier than 2015-04-20 |  | Trần Thanh Điện; Phạm Tấn Hoàng; Huỳnh Phương Nam; Phan Minh Khang [50%] | 3.5h | 3.5h | 171 | 171 | 171 |  |
| 4 | 1.3 | Họp nhân viên biên tập lần 3 |  | 1h | 2015-04-27 A | 2015-04-27 A |  | 100% |  | 2015-04-27 | 2015-04-27 | 1h |  | start no earlier than 2015-04-27 |  | Trần Thanh Điện; Phạm Tấn Hoàng; Huỳnh Phương Nam; Phan Minh Khang [50%] | 3.5h | 3.5h | 171 | 171 | 171 |  |
| 5 | 1.4 | Họp nhân viên biên tập lần 4 |  | 1h | 2015-05-04 A | 2015-05-04 A |  | 100% |  | 2015-05-04 | 2015-05-04 | 1h |  | start no earlier than 2015-05-04 |  | Trần Thanh Điện; Phạm Tấn Hoàng; Huỳnh Phương Nam; Phan Minh Khang [50%] | 3.5h | 3.5h | 171 | 171 | 171 |  |
| 6 | 1.5 | Họp nhân viên biên tập lần 5 |  | 1h | 2015-05-11 A | 2015-05-11 A |  | 100% |  | 2015-05-11 | 2015-05-11 | 1h |  | start no earlier than 2015-05-11 |  | Trần Thanh Điện; Phạm Tấn Hoàng; Huỳnh Phương Nam; Phan Minh Khang [50%] | 3.5h | 3.5h | 171 | 171 | 171 |  |
| 7 | 1.6 | Họp nhân viên biên tập lần 6 |  | 1h | 2015-05-18 A | 2015-05-18 A |  | 100% |  | 2015-05-18 | 2015-05-18 | 1h |  | start no earlier than 2015-05-18 |  | Trần Thanh Điện; Phạm Tấn Hoàng; Huỳnh Phương Nam; Phan Minh Khang [50%] | 3.5h | 3.5h | 171 | 171 | 171 |  |
| 8 | 1.7 | Họp nhân viên biên tập lần 7 |  | 1h | 2015-05-25 A | 2015-05-25 A |  | 100% |  | 2015-05-25 | 2015-05-25 | 1h |  | start no earlier than 2015-05-25 |  | Trần Thanh Điện; Phạm Tấn Hoàng; Huỳnh Phương Nam; Phan Minh Khang [50%] | 3.5h | 3.5h | 171 | 171 | 171 |  |
| 9 | 1.8 | Họp nhân viên biên tập lần 8 |  | 2h | 2015-08-04 | 2015-08-05 |  |  |  | 2015-06-01 | 2015-06-01 | 1h | 81.88d | start no earlier than 2015-08-04 |  | Trần Thanh Điện; Phạm Tấn Hoàng; Huỳnh Phương Nam; Phan Minh Khang [50%] | 3.5h |  | 171 | 171 |  |  |
| 10 | 1.9 | Họp nhân viên biên tập lần 9 |  | 2h | 2015-08-04 | 2015-08-05 |  |  |  | 2015-06-08 | 2015-06-08 | 1h | 81.88d | start no earlier than 2015-08-04 |  | Trần Thanh Điện; Phạm Tấn Hoàng; Huỳnh Phương Nam; Phan Minh Khang [50%] | 3.5h |  | 171 | 171 |  |  |
| 11 | 1.10 | Họp nhân viên biên tập lần 10 |  | 2h | 2015-08-04 | 2015-08-05 |  |  |  | 2015-06-15 | 2015-06-15 | 1h | 81.88d | start no earlier than 2015-08-04 |  | Trần Thanh Điện; Phạm Tấn Hoàng; Huỳnh Phương Nam; Phan Minh Khang [50%] | 3.5h |  | 171 | 171 |  |  |
| 12 | 1.11 | Họp nhân viên biên tập lần 11 |  | 2h | 2015-08-04 | 2015-08-05 |  |  |  | 2015-06-22 | 2015-06-22 | 1h | 81.88d | start no earlier than 2015-08-04 |  | Trần Thanh Điện; Phạm Tấn Hoàng; Huỳnh Phương Nam; Phan Minh Khang [50%] | 3.5h |  | 171 | 171 |  |  |
| 13 | 1.12 | Họp nhân viên biên tập lần 12 |  | 2h | 2015-08-04 | 2015-08-05 |  |  |  | 2015-06-29 | 2015-06-29 | 1h | 81.88d | start no earlier than 2015-08-04 |  | Trần Thanh Điện; Phạm Tấn Hoàng; Huỳnh Phương Nam; Phan Minh Khang [50%] | 3.5h |  | 171 | 171 |  |  |
| 14 | 1.13 | Họp nhân viên biên tập lần 13 |  | 2h | 2015-08-04 | 2015-08-05 |  |  |  | 2015-07-06 | 2015-07-06 | 1h | 81.88d | start no earlier than 2015-08-04 |  | Trần Thanh Điện; Phạm Tấn Hoàng; Huỳnh Phương Nam; Phan Minh Khang [50%] | 3.5h |  | 171 | 171 |  |  |
| 15 | 2 | **Sự tiêp nhận** |  | 37d | 2015-04-06 A | 2015-05-26 A |  | 100% |  | 2015-04-06 | 2015-05-25 | 35.5d |  |  |  |  | 468h | 468h | 18,804 | 18,264 | 18,804 |  |
| 16 | 2.1 | Nhận bản thảo | milestone | 0d | 2015-04-06 A | 2015-04-06 A |  | 100% |  | 2015-04-06 | 2015-04-06 | 0d |  |  |  |  |  |  |  |  |  |  |
| 17 | 2.2 | Biên tập nội dung |  | 15d | 2015-04-06 A | 2015-04-30 A | 16 | 100% |  | 2015-04-06 | 2015-04-30 | 15d |  |  |  | Trần Thanh Điện | 120h | 120h | 6,300 | 6,300 | 6,300 | Full developmental edit |
| 18 | 2.3 | Đánh giá tác phẩm gốc |  | 10.25d | 2015-04-23 A | 2015-05-07 A | 17FS-5d | 100% |  | 2015-04-23 | 2015-05-07 | 10.25d |  |  |  | Huỳnh Phương Nam; Lê Xuân Thy | 164h | 164h | 8,364 | 8,364 | 8,364 |  |
| 19 | 2.4 | Đánh giá của tác giả về nội dung biên tập |  | 13.5d | 2015-05-07 A | 2015-05-26 A | 17, 18 | 100% |  | 2015-05-07 | 2015-05-25 | 12d |  |  |  | Tạ Thanh Hải; Biên tập viên | 184h | 184h | 4,140 | 3,600 | 4,140 | Incorp must-fix issues |
| 20 | 2.5 | Bàn giao cho bộ phận biên tập | milestone | 0d | 2015-05-26 A | 2015-05-26 A | 19 | 100% |  | 2015-05-25 | 2015-05-25 | 0d |  |  | 2015-05-29 | Trần Thanh Điện |  |  |  |  |  |  |
| 21 | 3 | **Biên tập** |  | 28.4d | 2015-05-27 A | 2015-07-06 A | 15 | 100% |  | 2015-05-25 | 2015-07-03 | 29.12d |  |  |  |  | 413h | 413h | 16,201 | 15,670 | 16,201 |  |
| 22 | 3.1 | Sắp xếp bản thảo cho bản sao |  | 5d | 2015-05-27 A | 2015-06-02 A |  | 100% |  | 2015-05-25 | 2015-06-01 | 5.12d |  |  |  | Huỳnh Phương Nam; Phan Minh Khang [50%] | 63h | 63h | 3,213 | 3,060 | 3,213 | Address outstanding line edit issues |
| 23 | 3.2 | Bản sao |  | 10.5d | 2015-06-03 A | 2015-06-17 A | 22 | 100% |  | 2015-06-01 | 2015-06-16 | 11.25d |  |  |  | Biên tập viên [200%] | 188h | 188h | 8,460 | 8,100 | 8,460 | Style Guide compliance |
| 24 | 3.3 | Đánh giá của tác giả về bản sao |  | 10.2d | 2015-06-17 A | 2015-07-01 A | 23 | 100% |  | 2015-06-16 | 2015-06-30 | 10d |  |  |  | Tạ Thanh Hải; Biên tập viên [25%] | 102h | 102h | 918 | 900 | 918 | Incorp must-fix issues |
| 25 | 3.4 | Kết hợp bảo sao |  | 5.12d | 2015-06-29 A | 2015-07-06 A | 24FS-2.5% | 100% |  | 2015-06-26 | 2015-07-03 | 5.12d |  |  |  | Trần Thanh Điện; Phan Minh Khang [50%] | 60h | 60h | 3,610 | 3,610 | 3,610 | Incorp must-fix issues |
| 26 | 3.5 | Bàn giao cho bộ phận sản xuất | milestone | 0d | 2015-07-06 A | 2015-07-06 A | 25 | 100% |  | 2015-07-03 | 2015-07-03 | 0d |  |  |  | Huỳnh Phương Nam |  |  |  |  |  |  |

| ID | WBS | Task | Type | Duration | Start | Finish | Predecessors | Complete | Remaining | Baseline start | Baseline finish | Baseline duration | Total slack | Free slack | Constraint | Calendar | Resources | Work | Actual work | Cost | Baseline cost | Actual cost |
| --- | --- | --- | --- | --- | --- | --- | --- | --- | --- | --- | --- | --- | --- | --- | --- | --- | --- | --- | --- | --- | --- | --- |
| 27 | 4 | **Thiết kế và Sản xuất** |  | 62.6d | 2015-07-06 A | 2015-09-30 | 21 | 43% | 35.73d | 2015-07-03 | 2015-09-23 | 58.25d | 2d |  |  |  |  | 927.6h | 431.6h | 48,863.5 | 46,679 | 23,544.5 |
| 28 | 4.1 | Thiết lập trang |  | 15d | 2015-07-06 A | 2015-07-27 A |  | 100% |  | 2015-07-03 | 2015-07-24 | 15d |  |  |  |  | Lê Xuân Thy | 120h | 120h | 7,590 | 7,590 | 7,590 |
| 29 | 4.2 | Thiết kế minh họa bên trong |  | 17.6d | 2015-07-06 A | 2015-07-29 A | 28SS | 100% |  | 2015-07-03 | 2015-07-24 | 15.25d |  |  |  |  | Đoàn Minh Hòa; Huỳnh Phương Nam | 279.6h | 279.6h | 15,234.5 | 13,050 | 15,234.5 |
| 30 | 4.3 | **Đánh giá các trang lần thứ nhất** |  | 32d | 2015-07-30 A | 2015-09-11 | 29 | 7% | 29.87d | 2015-07-24 | 2015-09-04 | 30d | 3.5d | 0d |  |  |  | 320h | 32h | 13,860 | 13,860 | 720 |
| 31 | 4.3.1 | Hiệu đính và lập chỉ mục |  | 10d | 2015-07-30 A | 2015-08-14 |  | 20% | 8d | 2015-07-24 | 2015-08-07 | 10d | 3.5d | 0d | start no earlier than 2015-07-17 |  | Tạ Thanh Hải; Biên tập viên | 100h | 32h | 900 | 900 | 720 |
| 32 | 4.3.2 | Kết hợp đánh giá các trang lần thứ nhất |  | 10d | 2015-08-17 | 2015-08-28 | 31 |  |  | 2015-08-07 | 2015-08-21 | 10d | 3.5d | 0d |  |  | Huỳnh Phương Nam; Phan Minh Khang [50%] | 120h |  | 6,120 | 6,120 |  |
| 33 | 4.3.3 | Gửi các trang đã được hiệu đính đến bộ phận sản xuất | milestone | 0d | 2015-08-28 | 2015-08-28 | 32 |  |  | 2015-08-21 | 2015-08-21 | 0d | 3.5d | 0d |  |  | Huỳnh Phương Nam |  |  |  |  |  |
| 34 | 4.3.4 | Nhập các chỉnh sửa trang và lập chỉ mục |  | 5d | 2015-08-31 | 2015-09-04 | 33 |  |  | 2015-08-21 | 2015-08-28 | 5d | 3.5d | 0d |  |  | Lê Xuân Thy; Phan Minh Khang [50%] | 60h |  | 4,040 | 4,040 |  |
| 35 | 4.3.5 | Thiết kế trang bìa |  | 5d | 2015-09-07 | 2015-09-11 | 34 |  |  | 2015-08-28 | 2015-09-04 | 5d | 3.5d | 0d |  |  | Đoàn Minh Hòa | 40h |  | 2,800 | 2,800 |  |
| 36 | 4.4 | **Đánh giá các trang lần thứ hai** |  | 13d | 2015-09-14 | 2015-09-30 |  |  |  | 2015-09-04 | 2015-09-23 | 13d | 2d |  |  |  |  | 120h |  | 6,345 | 6,345 |  |
| 37 | 4.4.1 | In thử và đánh giá |  | 6.5d | 2015-09-14 | 2015-09-22 | 35 |  |  | 2015-09-04 | 2015-09-15 | 6.5d | 3.5d | 0d |  |  | Huỳnh Phương Nam | 40h |  | 1,800 | 1,800 |  |
| 38 | 4.4.2 | Gửi các trang đã được hiệu đính đến bộ phận sản xuất | milestone | 0d | 2015-09-22 | 2015-09-22 | 37 |  |  | 2015-09-15 | 2015-09-15 | 0d | 3.5d | 0.5d |  |  | Huỳnh Phương Nam |  |  |  |  |  |
| 39 | 4.4.3 | Đánh giá cuối cùng |  | 5d | 2015-09-24 | 2015-09-30 | 38 |  |  | 2015-09-16 | 2015-09-23 | 5d | 2d |  |  |  | Lê Xuân Thy; Huỳnh Phương Nam [50%]; Trần Thanh Điện [50%]; Bản in thử [20 copies] | 80h |  | 4,545 | 4,545 |  |
| 40 | 4.5 | **Thiết kế trang web đồng hành của sách** |  | 10d | 2015-09-14 | 2015-09-25 | 30 |  |  | 2015-09-04 | 2015-09-18 | 10d | 5d |  |  |  |  | 88h |  | 5,834 | 5,834 |  |
| 41 | 4.5.1 | Tạo mô hình |  | 4.5d | 2015-09-14 | 2015-09-23 |  |  |  | 2015-09-04 | 2015-09-16 | 4.5d | 5d | 0d |  |  | Đoàn Minh Hòa; Huỳnh Phương Nam | 48h |  | 2,610 | 2,610 |  |
| 42 | 4.5.2 | Đánh giá với tác giả |  | 2d | 2015-09-24 | 2015-09-25 | 41 |  |  | 2015-09-16 | 2015-09-18 | 2d | 5d |  |  |  | Đoàn Minh Hòa; Tạ Thanh Hải; Đi lại [0.1%]; Phan Minh Khang [50%] | 40h |  | 3,224 | 3,224 |  |
| 43 | 5 | **Chuẩn bị màu và in** |  | 44d | 2015-10-05 | 2015-12-03 | 40 |  |  | 2015-09-23 | 2015-11-26 | 46d | 0d |  |  |  |  | 328h |  | 5,310 | 5,310 |  |
| 44 | 5.1 | Gửi đến bộ phận pha màu |  | 1d | 2015-10-05 | 2015-10-05 | 36 |  |  | 2015-09-23 | 2015-09-28 | 1d | 0d |  |  | Monday-Wednesday | Huỳnh Phương Nam | 8h |  | 310 | 310 |  |
| 45 | 5.2 | Tạo các bản in |  | 10d | 2015-10-06 | 2015-10-19 | 44 |  |  | 2015-09-28 | 2015-10-12 | 10d | 0d |  |  |  | Dịch vụ pha màu | 80h |  | 5,000 | 5,000 |  |
| 46 | 5.3 | In và vận chuyển |  | 30d | 2015-10-23 | 2015-12-03 | 45FS+3d |  |  | 2015-10-15 | 2015-11-26 | 30d | 0d |  |  |  | Dịch vụ in | 240h |  |  |  |  |
| 47 | 6 | **Chuẩn bị ra mắt sách** |  | 22d | 2015-10-06 | 2015-11-04 |  |  |  | 2015-09-28 | 2015-10-28 | 22d | 21d |  |  |  |  | 212h |  | 9,442 | 9,442 |  |
| 48 | 6.1 | Lập kế hoạch ra mắt |  | 5d | 2015-10-06 | 2015-10-12 | 44 |  |  | 2015-09-28 | 2015-10-05 | 5d | 21d | 0d |  |  | Trần Thanh Điện [50%]; Lê Xuân Thy | 36h |  | 2,062 | 2,062 |  |
| 49 | 6.2 | Chỉ định các thành viên trong nhóm khởi động |  | 1d | 2015-10-13 | 2015-10-13 | 48 |  |  | 2015-10-05 | 2015-10-06 | 1d | 21d | 0d |  |  | Trần Thanh Điện | 8h |  | 420 | 420 |  |
| 50 | 6.3 | Hoàn thành bảng câu hỏi về tác giả |  | 5d | 2015-10-14 | 2015-10-20 | 49 |  |  | 2015-10-06 | 2015-10-13 | 5d | 21d | 0d |  |  | Huỳnh Phương Nam; Tạ Thanh Hải; Đi lại [0.1%] | 80h |  | 3,550 | 3,550 |  |
| 51 | 6.4 | Lên lịch phỏng vấn tác giả |  | 1d | 2015-10-21 | 2015-10-21 | 50 |  |  | 2015-10-13 | 2015-10-14 | 1d | 21d | 0d |  |  | Huỳnh Phương Nam | 8h |  | 310 | 310 |  |
| 52 | 6.5 | Thiết kế và đặt hàng tài liệu tiếp thị |  | 10d | 2015-10-22 | 2015-11-04 | 51 |  |  | 2015-10-14 | 2015-10-28 | 10d | 21d |  |  |  | Huỳnh Phương Nam | 80h |  | 3,100 | 3,100 |  |
