# Kế hoạch ra mắt sách mới

Schedule from MS Project, 2015-01-05 to 2015-02-26, status date 2015-01-14, costs in $, A marks actual dates.
New book launch schedule
Lucerne Publishing
Sách mới dành cho trẻ em phát hành vào mùa xuân

## Calendars

- Standard: Mon-Fri 08:00-12:00, 13:00-17:00; Sat-Sun off. Exceptions (off unless hours are given): 2015-01-22 (Sự kiện dành cho nhân viên).

## Resources

| Resource | Rate | Notes |
| --- | --- | --- |
| Phạm Tấn Hoàng | 42 |  |
| Trương Thanh Mai | 27.5 | Mức lương tiêu chuẩn của Trương Thanh Mai được điều chỉnh cho lịch tŕnh làm việc bán thời gian của cô ấy. |
| Nguyễn Thúy An | 67.5 | Nguyễn Thúy An đă làm việc trong các chiến dịch ra mắt hai cuốn sách trước với Tạ Thanh Hải. |
| Tạ Thanh Hải |  |  |
| Lại Hữu Diệp | 55 |  |
| Biên tập viên | 45 |  |
| Đi lại |  |  |
| Trần Thanh Điện | 52.5 |  |
| Phan Minh Khang | 75.5 |  |
| Huỳnh Phương Nam | 38.75 |  |
| Lê Xuân Thy | 55 |  |
| Lâm Hoài Thanh | 69.5 |  |
| Mai Hồng Nhung | 48 |  |
| Đoàn Minh Hòa | 70 |  |
| Dịch vụ in ấn |  |  |
| Đỗ Hữu Trí | 44 |  |
| Nguyễn Hòa Bình | 22 |  |
| Thái Thùy Linh |  |  |

## Schedule

| ID | WBS | Task | Type | Duration | Start | Finish | Predecessors | Complete | Remaining | Baseline start | Baseline finish | Baseline duration | Total slack | Free slack | Resources | Work | Actual work | Cost | Baseline cost | Actual cost |
| --- | --- | --- | --- | --- | --- | --- | --- | --- | --- | --- | --- | --- | --- | --- | --- | --- | --- | --- | --- | --- |
| 1 | 1 | **Giai đoạn lập kế hoạch** |  | 11d | 2015-01-05 A | 2015-01-19 A |  | 100% |  | 2015-01-05 | 2015-01-19 | 11d |  |  |  | 248h | 248h | 11,900 | 11,900 | 11,900 |
| 2 | 1.1 | Chỉ định các thành viên trong nhóm phát hành |  | 1d | 2015-01-05 A | 2015-01-05 A |  | 100% |  | 2015-01-05 | 2015-01-05 | 1d |  |  | Trần Thanh Điện | 8h | 8h | 420 | 420 | 420 |
| 3 | 1.2 | Hoàn thành bảng câu hỏi về tác giả |  | 1w | 2015-01-06 A | 2015-01-12 A | 2 | 100% |  | 2015-01-06 | 2015-01-12 | 1w |  |  | Tạ Thanh Hải | 40h | 40h |  |  |  |
| 4 | 1.3 | Lên lịch phỏng vấn tác giả |  | 1w | 2015-01-05 A | 2015-01-12 A | 2 | 100% |  | 2015-01-05 | 2015-01-12 | 1w |  |  | Phạm Tấn Hoàng | 40h | 40h | 1,680 | 1,680 | 1,680 |
| 5 | 1.4 | Thiết kế và đặt hàng tài liệu tiếp thị |  | 2w | 2015-01-06 A | 2015-01-19 A | 2 | 100% |  | 2015-01-06 | 2015-01-19 | 2w |  |  | Nguyễn Thúy An; Lại Hữu Diệp | 160h | 160h | 9,800 | 9,800 | 9,800 |
| 6 | 1.5 | Lập kế hoạch hoàn tất! | milestone | 0d | 2015-01-19 A | 2015-01-19 A | 5 | 100% |  | 2015-01-19 | 2015-01-19 |  |  |  |  |  |  |  |  |  |
| 7 | 2 | **Giai đoạn ra mắt nội bộ** |  | 15d | 2015-01-20 A | 2015-02-10 | 1 | 67% | 5d | 2015-01-20 | 2015-02-06 | 13d | 0d |  |  | 332h | 204h | 16,302 | 13,942 | 10,240 |
| 8 | 2.1 | Khởi động cuộc họp ra mắt sách |  | 1d | 2015-01-20 A | 2015-01-20 A |  | 100% |  | 2015-01-20 | 2015-01-20 | 1d |  |  | Trương Thanh Mai [50%]; Nguyễn Thúy An | 12h | 12h | 650 | 650 | 650 |
| 9 | 2.2 | Soạn báo cáo lời - lỗ về sách |  | 3d | 2015-01-21 A | 2015-01-26 A | 8 | 100% |  | 2015-01-21 | 2015-01-23 | 2d |  |  | Trần Thanh Điện | 24h | 24h | 1,260 | 840 | 1,260 |
| 10 | 2.3 | Lập kế hoạch cho hành trình của tác giả |  | 7d | 2015-01-20 A | 2015-01-29 A | 8 | 100% |  | 2015-01-21 | 2015-01-29 | 6d |  |  | Lê Xuân Thy | 56h | 56h | 3,080 | 2,640 | 3,080 |
| 11 | 2.4 | Chuẩn bị kênh bán hàng |  | 7d | 2015-01-21 A | 2015-01-30 A | 8 | 100% |  | 2015-01-21 | 2015-01-28 | 1w |  |  | Lại Hữu Diệp; Huỳnh Phương Nam | 112h | 112h | 5,250 | 3,750 | 5,250 |
| 12 | 2.5 | Hoàn thành mẫu ra mắt sách |  | 2d | 2015-02-02 | 2015-02-03 | 11 |  |  | 2015-01-29 | 2015-01-30 | 2d | 5d |  | Nguyễn Thúy An; Nguyễn Hòa Bình | 32h |  | 1,432 | 1,432 |  |
| 13 | 2.6 | Chuẩn bị bộ tài liệu bán sách |  | 1w | 2015-02-02 | 2015-02-06 | 8, 11 |  |  | 2015-01-29 | 2015-02-04 | 1w | 0d |  | Huỳnh Phương Nam; Lại Hữu Diệp | 80h |  | 3,750 | 3,750 |  |
| 14 | 2.7 | Phân phối tài liệu tiếp thị nội bộ |  | 2d | 2015-02-09 | 2015-02-10 | 13 |  |  | 2015-02-05 | 2015-02-06 | 2d | 0d |  | Lại Hữu Diệp | 16h |  | 880 | 880 |  |
| 15 | 3 | **Giai đoạn ra mắt công khai** |  | 12d | 2015-02-11 | 2015-02-26 | 7 |  |  | 2015-02-09 | 2015-02-24 | 12d | 0d |  |  | 280h |  | 13,352 | 13,352 |  |
| 16 | 3.1 | **Sự xuất hiện và hành trình của tác giả** |  | 2d | 2015-02-11 | 2015-02-12 |  |  |  | 2015-02-09 | 2015-02-10 | 2d | 10d |  |  | 16h |  | 800 | 800 |  |
| 17 | 3.1.1 | Tác giả phỏng vấn trên đài phát thanh |  | 1d | 2015-02-11 | 2015-02-11 |  |  |  | 2015-02-09 | 2015-02-09 | 1d | 10d | 0d | Tạ Thanh Hải | 8h |  |  |  |  |
| 18 | 3.1.2 | Tác giả đọc và ký tặng tại hội sách |  | 1d | 2015-02-12 | 2015-02-12 | 17 |  |  | 2015-02-10 | 2015-02-10 | 1d | 10d |  | Tạ Thanh Hải; Đi lại [0.1%] | 8h |  | 800 | 800 |  |
| 19 | 3.2 | Phân phối các bản sao trước |  | 2d | 2015-02-11 | 2015-02-12 |  |  |  | 2015-02-09 | 2015-02-10 | 2d | 10d |  | Nguyễn Thúy An; Nguyễn Hòa Bình | 32h |  | 1,432 | 1,432 |  |
| 20 | 3.3 | Phân phối bộ tài liệu bán sách |  | 2d | 2015-02-11 | 2015-02-12 |  |  |  | 2015-02-09 | 2015-02-10 | 2d | 0d |  | Lại Hữu Diệp | 16h |  | 880 | 880 |  |
| 21 | 3.4 | Phối hợp các bài báo nổi bật trên tạp chí |  | 7d | 2015-02-13 | 2015-02-23 | 20 |  |  | 2015-02-11 | 2015-02-19 | 7d | 3d |  | Lại Hữu Diệp | 56h |  | 3,080 | 3,080 |  |
| 22 | 3.5 | Ra mắt cổng web công khai cho sách |  | 1w | 2015-02-13 | 2015-02-19 | 20 |  |  | 2015-02-11 | 2015-02-17 | 1w | 0d |  | Nguyễn Thúy An; Nguyễn Hòa Bình | 80h |  | 3,580 | 3,580 |  |
| 23 | 3.6 | Ra mắt các chương trình truyền thông xã hội cho sách |  | 1w | 2015-02-20 | 2015-02-26 | 22 |  |  | 2015-02-18 | 2015-02-24 | 1w | 0d |  | Nguyễn Thúy An; Nguyễn Hòa Bình | 80h |  | 3,580 | 3,580 |  |
| 24 | 3.7 | Việc ra mắt hoàn tất! | milestone | 0d | 2015-02-26 | 2015-02-26 | 21, 22, 23 |  |  | 2015-02-24 | 2015-02-24 |  | 0d |  |  |  |  |  |  |  |

Notes:
- 19: Nhận danh sách người nhận từ người công bố
